# TaskPlan - ISO Datatype - Option C

Schedule from MS Project, 2010-03-01 to 2010-05-14.
NIH/NCI

## Calendars

- Standard: Mon-Fri 08:00-12:00, 13:00-17:00; Sat-Sun off.

## Resources

| Resource |
| --- |
| SDK |
| caGrid |
| caAdapter |
| QA |

## Schedule

| ID | WBS | Task | Type | Duration | Start | Finish | Predecessors | Total slack | Free slack | Constraint | Resources | Work |
| --- | --- | --- | --- | --- | --- | --- | --- | --- | --- | --- | --- | --- |
| 1 | 1 | **ISO Datatype support** |  | 55d | 2010-03-01 | 2010-05-14 |  | 0d |  |  |  | 2980h |
| 2 | 1.1 | Kickoff |  | 1d | 2010-03-01 | 2010-03-01 |  | 0d |  | start no earlier than 2010-03-01 |  |  |
| 4 | 1.2 | **Implementation** |  | 45d | 2010-03-02 | 2010-05-03 |  | 0d |  |  |  | 1780h |
| 5 | 1.2.1 | **ISO 21090 Library** |  | 20d | 2010-03-02 | 2010-03-29 |  | 0d |  |  |  | 480h |
| 6 | 1.2.1.1 | Analyze COPPA Localized library |  | 5d | 2010-03-02 | 2010-03-08 | 2 | 0d |  |  | SDK; caGrid | 80h |
| 7 | 1.2.1.2 | Analyze COPPA serialization framework |  | 5d | 2010-03-02 | 2010-03-08 | 2 | 49d |  |  | SDK; caGrid | 80h |
| 8 | 1.2.1.3 | Analyze COPPA OR Mapping framework |  | 5d | 2010-03-02 | 2010-03-08 | 2 | 9d | 0d |  | SDK; caGrid | 80h |
| 9 | 1.2.1.4 | Implement enhancements in datatype library |  | 15d | 2010-03-09 | 2010-03-29 | 8 | 9d | 0d |  | SDK; caGrid | 240h |
| 10 | 1.2.1.5 | Baseline library code | milestone | 0d | 2010-03-29 | 2010-03-29 | 9 | 9d | 0d |  |  |  |
| 12 | 1.2.2 | **SDK Enhancements** |  | 30d | 2010-03-09 | 2010-04-19 |  | 0d |  |  |  | 480h |
| 13 | 1.2.2.1 | Enhance SDK Java code generator for the ISO data types |  | 5d | 2010-03-09 | 2010-03-15 | 6 | 44d |  |  | SDK | 40h |
| 14 | 1.2.2.2 | Enhance SDK ORM module for ISO data types |  | 10d | 2010-03-09 | 2010-03-22 | 6 | 39d |  |  | SDK | 80h |
| 15 | 1.2.2.3 | Enhance SDK service layer to support ISO data types |  | 15d | 2010-03-09 | 2010-03-29 | 6 | 0d |  |  | SDK | 120h |
| 16 | 1.2.2.4 | Enhance SDK proxy framework for ISO data types |  | 5d | 2010-03-30 | 2010-04-05 | 15 | 29d |  |  | SDK | 40h |
| 17 | 1.2.2.5 | Enhance SDK RESTful query translator for ISO data types |  | 10d | 2010-03-30 | 2010-04-12 | 15 | 24d |  |  | SDK | 80h |
| 18 | 1.2.2.6 | Enhance BDA scripts for packaging and deployment |  | 10d | 2010-03-30 | 2010-04-12 | 6, 15 | 0d |  |  | SDK | 80h |
| 19 | 1.2.2.7 | Unit test and defect fix |  | 5d | 2010-04-13 | 2010-04-19 | 18 | 0d |  |  | SDK | 40h |
| 20 | 1.2.2.8 | Deliver baseline SDK | milestone | 0d | 2010-04-19 | 2010-04-19 | 19 | 19d |  |  |  |  |
| 22 | 1.2.3 | **caAdapter Enhancements** |  | 30d | 2010-03-09 | 2010-04-19 |  | 13d |  |  |  | 200h |
| 23 | 1.2.3.1 | Enhance caAdapter to load ISO 21090 information |  | 5d | 2010-03-09 | 2010-03-15 | 6 | 13d | 0d |  |  |  |
| 24 | 1.2.3.2 | Enhance caAdapter Model Mapping Service |  | 20d | 2010-03-16 | 2010-04-12 | 23 | 19d | 0d |  | caAdapter | 160h |
| 25 | 1.2.3.3 | Unit test and defect fix |  | 5d | 2010-04-13 | 2010-04-19 | 24 | 19d | 0d |  | caAdapter | 40h |
| 26 | 1.2.3.4 | Deliver baseline caAdapter | milestone | 0d | 2010-04-19 | 2010-04-19 | 25 | 19d |  |  |  |  |
| 28 | 1.2.4 | **caGrid Enhancements** |  | 35d | 2010-03-16 | 2010-05-03 |  | 9d |  |  |  | 476h |
| 29 | 1.2.4.1 | Document the short and long term scope of the caGrid efforts |  | 5d | 2010-03-30 | 2010-04-05 | 10 | 11.5d | 0d |  | caGrid | 40h |
| 30 | 1.2.4.2 | Create design document for ISO Introduce Extension |  | 4d | 2010-04-06 | 2010-04-09 | 29 | 11.5d | 0d |  | caGrid | 32h |
| 31 | 1.2.4.3 | Create Introduce data types extension for adding ISODatatypes to a service |  | 5d | 2010-04-12 | 2010-04-16 | 30 | 11.5d | 0d |  | caGrid | 40h |
| 32 | 1.2.4.4 | Create Service Development Process Documentation for ISO datatypes |  | 2d | 2010-04-19 | 2010-04-20 | 31 | 11.5d | 0d |  | caGrid | 16h |
| 33 | 1.2.4.5 | Develop UI component for Introduce data types extension for adding ISODatatypes to a service |  | 2d | 2010-04-21 | 2010-04-22 | 32 | 11.5d | 0d |  | caGrid | 16h |
| 34 | 1.2.4.6 | Develop developer guide documentation for data type extension |  | 2d | 2010-04-23 | 2010-04-26 | 33 | 11.5d | 0d |  | caGrid | 16h |
| 35 | 1.2.4.7 | Review SDK database/usertype approach |  | 2d | 2010-03-30 | 2010-03-31 | 10 | 9d | 0d |  | caGrid | 16h |
| 36 | 1.2.4.8 | Design CQL to HQL general approach for SDK managed ISO datatypes |  | 10d | 2010-04-01 | 2010-04-14 | 35 | 9d | 0d |  | caGrid | 80h |
| 37 | 1.2.4.9 | Prototype SDK/caGrid query exchange |  | 10d | 2010-04-15 | 2010-04-28 | 36 | 9d | 0d |  | caGrid | 80h |
| 38 | 1.2.4.10 | Develop developer guide documentation for data service support |  | 3d | 2010-04-29 | 2010-05-03 | 37 | 9d |  |  | caGrid | 24h |
| 39 | 1.2.4.11 | Make ISO client libraries available via download (e.g. any specialized data service client libraries, etc) |  | 0.5d | 2010-04-27 | 2010-04-27 | 34 | 11.5d | 0d |  | caGrid | 4h |
| 40 | 1.2.4.12 | Upload ISO datatype extension to Introduce Update Site |  | 0.5d | 2010-04-27 | 2010-04-27 | 39 | 11.5d | 0d |  | caGrid | 4h |
| 41 | 1.2.4.13 | Upload ISO datatype data service extension/style to Introduce Update Site |  | 0.5d | 2010-04-28 | 2010-04-28 | 40 | 11.5d | 0d |  | caGrid | 4h |
| 42 | 1.2.4.14 | Ivyify retrieval of dependency on common project |  | 1d | 2010-04-28 | 2010-04-29 | 41 | 11.5d |  |  | caGrid | 8h |
| 43 | 1.2.4.15 | Develop reference service and limited tutorial |  | 7d | 2010-03-16 | 2010-03-24 | 23 | 13d | 0d |  | caGrid | 56h |
| 44 | 1.2.4.16 | Unit test and defect fix |  | 5d | 2010-03-25 | 2010-03-31 | 43 | 13d | 0d |  | caGrid | 40h |
| 45 | 1.2.4.17 | Deliver baseline caGrid components | milestone | 0d | 2010-03-31 | 2010-03-31 | 44 | 13d |  |  | caGrid |  |

| ID | WBS | Task | Type | Duration | Start | Finish | Predecessors | Total slack | Resources | Work |
| --- | --- | --- | --- | --- | --- | --- | --- | --- | --- | --- |
| 47 | 1.2.5 | **SDK/caGrid Integration** |  | 9d | 2010-04-20 | 2010-04-30 |  | 0d |  | 144h |
| 48 | 1.2.5.1 | Integration testing and defect fixing |  | 9d | 2010-04-20 | 2010-04-30 | 19, 45 | 0d | SDK; caGrid | 144h |
| 49 | 1.2.5.2 | Deliver SDK and caGrid alpha version | milestone | 0d | 2010-04-30 | 2010-04-30 | 48 | 0d |  |  |
| 51 | 1.3 | **QA Testing** |  | 34d | 2010-03-30 | 2010-05-14 |  | 0d |  | 480h |
| 52 | 1.3.1 | Prepare test plan |  | 10d | 2010-03-30 | 2010-04-12 | 10 | 24d | QA; SDK; caGrid | 240h |
| 53 | 1.3.2 | Execute test cases |  | 10d | 2010-05-03 | 2010-05-14 | 49 | 0d | QA | 80h |
| 54 | 1.3.3 | Provide test support |  | 10d | 2010-05-03 | 2010-05-14 | 49 | 0d | SDK; caGrid | 160h |
| 55 | 1.3.4 | Deliver SDK, caGrid, caAdapter | milestone | 0d | 2010-05-14 | 2010-05-14 | 54 | 0d |  |  |
| 57 | 1.4 | **User Documentation** |  | 10d | 2010-05-03 | 2010-05-14 |  | 0d |  | 720h |
| 58 | 1.4.1 | Prepare developers guide for service developers with ISO 21090 datatypes |  | 10d | 2010-05-03 | 2010-05-14 | 49 | 0d | SDK; caGrid; caAdapter | 240h |
| 59 | 1.4.2 | Prepare user guide |  | 10d | 2010-05-03 | 2010-05-14 | 49 | 0d | SDK; caGrid; caAdapter | 240h |
| 60 | 1.4.3 | Prepare installation guide |  | 10d | 2010-05-03 | 2010-05-14 | 49 | 0d | SDK; caGrid; caAdapter | 240h |
| 61 | 1.4.4 | Deliver installation and user guide | milestone | 0d | 2010-05-14 | 2010-05-14 | 59, 60 | 0d |  |  |
